# PRD2018-G10-甘特图v0.6

Schedule from MS Project, 2018-09-19 to 2019-01-22, 1 hours a day, costs in ¥, A marks actual dates.
HP

## Calendars

- 标准: Mon-Fri 19:00-21:00; Sat-Sun 19:00-22:00. Exceptions (off unless hours are given): 2018-10-01 to 2018-10-07 (十一小长假), 2018-11-03 to 2018-11-04 12:00-18:00 (制作原型), 2018-11-21 17:00-24:00 (重做需求计划), 2018-12-04 (确定业务需求), 2018-12-05 to 2018-12-07 (重做需求计划), 2018-12-18 to 2019-01-02 (制作界面原型), 2019-01-03 (JAD会议), 2019-01-12 (SRS评审).

## Resources

| Resource | Rate |
| --- | --- |
| 李俊 | 69 |
| 黄浩峰 | 69 |
| 叶忠杰 | 69 |
| 夏昌灏 | 69 |
| 吴荣欣 | 69 |

## Schedule

| ID | WBS | Task | Type | Duration | Start | Finish | Predecessors | Complete | Remaining | Actual start | Actual finish | Total slack | Resources | Work | Actual work | Cost | Actual cost | 输入 | 输出 | 任务说明 |
| --- | --- | --- | --- | --- | --- | --- | --- | --- | --- | --- | --- | --- | --- | --- | --- | --- | --- | --- | --- | --- |
| 1 | 1 | **软件工程系列课程教学辅助网站** |  | 232d | 2018-09-19 19:00 | 2019-01-22 09:00 |  | 23% | 178.51d | 2018-09-19 08:00 |  | 0d |  | 805.3h | 142.9h | 55,565.7 | 9,860.1 |  |  |  |
| 2 | 1.1 | **需求工程项目启动** |  | 18h | 2018-09-19 19:00 | 2018-09-23 09:00 |  | 93% | 1.24h | 2018-09-19 08:00 |  |  |  | 77.2h | 73.2h | 5,326.8 | 5,050.8 |  |  |  |
| 3 | 1.1.1 | 人员召集 | manual | 1h | 2018-09-19 08:00 A | 2018-09-19 09:00 A |  | 100% |  |  |  |  | 李俊; 黄浩峰; 叶忠杰; 夏昌灏; 吴荣欣 | 5h | 5h | 345 | 345 | G10小组 | 人员名单 | 课上黄浩峰、李俊与叶忠杰、夏昌灏、吴荣欣各自缺人，讨论合并为一组 |
| 4 | 1.1.2 | 确定小组名单 | manual | 1h | 2018-09-19 08:00 A | 2018-09-19 09:00 A | 3 | 100% |  |  |  |  | 李俊; 黄浩峰; 叶忠杰; 夏昌灏; 吴荣欣 | 5h | 5h | 345 | 345 | 人员名单 | 小组名单 | 本组成员为：李俊、黄浩峰、夏昌灏、叶忠杰、吴荣欣 |
| 5 | 1.1.3 | 启动会议 | manual | 1h | 2018-09-22 08:00 A | 2018-09-22 09:00 A | 4 | 100% |  |  |  |  | 黄浩峰; 李俊; 吴荣欣; 夏昌灏; 叶忠杰 | 5h | 5h | 345 | 345 | 全组成员参会 | 项目正式启动 | 项目正式启动 |
| 6 | 1.1.4 | 课题选定 | manual | 4h | 2018-09-23 08:00 A | 2018-09-23 12:00 A | 5 | 100% |  |  |  |  | 李俊; 黄浩峰; 叶忠杰; 吴荣欣; 夏昌灏 | 16h | 16h | 1,104 | 1,104 | 全组讨论 | 常规选题 | 杨老师给定了案例教学系统、渔乐生活APP、软件工程系列课程教学辅助网站，我们组根据自己的实际，选择了常规选题 |
| 7 | 1.1.5 | **软件环境配置** |  | 22h | 2018-10-01 08:00 A | 2018-10-03 09:00 |  | 100% |  |  | 2018-10-03 10:00 |  |  | 30h | 30h | 2,070 | 2,070 | 项目所需的各个软件 | 满足项目需要的环境 | 各组员按照杨老师上课提到的软件进行本地安装和部署 |
| 8 | 1.1.5.1 | OFFICE软件安装 | manual | 2h | 2018-10-01 08:00 A | 2018-10-01 10:00 A | 6 | 100% |  |  |  |  | 黄浩峰; 李俊; 吴荣欣; 夏昌灏; 叶忠杰 | 10h | 10h | 690 | 690 | office2010下载 | office2010各组员电脑安装 | 方便制作各种文档 |
| 9 | 1.1.5.2 | 原型制作工具安装 | manual | 2h | 2018-10-02 08:00 A | 2018-10-02 10:00 A | 6 | 100% |  |  |  |  | 黄浩峰; 李俊; 吴荣欣; 夏昌灏; 叶忠杰 | 10h | 10h | 690 | 690 | 原型制作工具下载 | 各组员电脑上安装 | 原本打算使用墨刀，但鉴于价格因素，以RP为备选 |
| 10 | 1.1.5.3 | 配置管理工具安装 | manual | 2h | 2018-10-03 08:00 A | 2018-10-03 10:00 A | 6 | 100% |  |  |  |  | 黄浩峰; 李俊; 吴荣欣; 夏昌灏; 叶忠杰 | 10h | 10h | 690 | 690 | git及github下载 | 各组员电脑安装 | 使用git进行版本控制 |
| 11 | 1.1.6 | **知识准备** |  | 177h | 2018-10-12 08:00 A | 2018-12-27 09:00 |  | 88% | 22.12h |  |  |  |  | 16.2h | 12.2h | 1,117.8 | 841.8 |  |  |  |
| 12 | 1.1.6.1 | 翻转：UML概述 | manual | 2h | 2018-10-12 08:00 A | 2018-10-12 10:00 A | 8 | 100% |  |  |  |  | 李俊 | 1h | 1h | 69 | 69 | UML概述知识 | UML概述PPT | 学习UML概述方面的知识 |
| 13 | 1.1.6.2 | 翻转：UML工具 | manual | 2h | 2018-10-20 19:00 A | 2018-10-21 02:00 A | 12 | 100% |  |  |  |  | 叶忠杰 | 1h | 1h | 69 | 69 | UML工具相关知识 | UML工具PPT | 就UML制作工具相关知识进行学习 |
| 14 | 1.1.6.3 | 翻转：UML基础I | manual | 2h | 2018-10-28 08:00 A | 2018-10-28 10:00 A | 13 | 100% |  |  |  |  | 黄浩峰 |  |  |  |  | UML基础I知识 | UML基础I-PPT | UML基础I学习 |
| 15 | 1.1.6.4 | 翻转：UML界面原型 | manual | 5h | 2018-11-02 08:00 A | 2018-11-02 13:00 A | 14 | 100% |  |  |  |  | 叶忠杰; 夏昌灏; 吴荣欣 | 7.2h | 7.2h | 496.8 | 496.8 | 学习界面原型相关 | UML界面原型PPT，以及初步的界面原型 | 因为理解错了任务要求，做出了初步的界面原型 |
| 16 | 1.1.6.5 | 翻转：UML基础III | manual | 3h | 2018-12-20 08:00 A | 2018-12-20 11:00 A | 15 | 100% |  |  |  |  | 李俊; 黄浩峰 | 3h | 3h | 207 | 207 | UML基础III知识 | UML基础III PPT | UML基础III知识学习 |
| 17 | 1.1.6.6 | 翻转：UML基础IV | manual | 2h | 2018-12-27 08:00 | 2018-12-27 10:00 | 16 |  |  |  |  |  | 黄浩峰; 李俊 | 4h |  | 276 |  | UML基础IV 知识 | UML基础IV PPT | UML基础IV学习 |
| 18 | 1.2 | **需求工程项目计划** |  | 173h | 2018-09-26 08:00 A | 2018-12-07 09:00 |  | 43% | 98.41h |  |  |  |  | 178.8h | 49.3h | 12,337.2 | 3,401.7 |  |  |  |
| 19 | 1.2.1 | **软件需求工程项目计划** |  | 22h | 2018-10-06 08:00 A | 2018-10-07 09:00 | 6 | 52% | 10.66h |  |  |  | 李俊; 黄浩峰; 吴荣欣; 叶忠杰; 夏昌灏 | 45h | 20.4h | 3,105 | 1,407.6 | 软件需求工程项目计划模板 | 软件需求工程项目计划V0.1 | 本组编写的第一个版本需求计划，参照的是学长模板 |
| 20 | 1.2.1.1 | 范围管理计划 | manual | 3h | 2018-10-06 08:00 A | 2018-10-06 11:00 | 6 | 67% | 1h |  |  |  | 黄浩峰 | 3h | 2h | 207 | 138 | 选题说明 | 范围管理文档 | 制作范围管理文档 |
| 21 | 1.2.1.2 | 风险管理计划 | manual | 3h | 2018-10-06 08:00 A | 2018-10-06 11:00 | 6 | 67% | 1h |  |  |  | 夏昌灏 | 3h | 2h | 207 | 138 | 风险管理计划模板 | 风险管理计划 | 制作风险管理计划 |
| 22 | 1.2.1.3 | 成本管理计划 | manual | 3h | 2018-10-06 08:00 A | 2018-10-06 11:00 | 6 | 33% | 2h |  |  |  | 李俊 | 2h |  | 138 |  | 成本管理计划模板 | 成本管理计划 | 制作成本管理计划 |
| 23 | 1.2.1.4 | 沟通管理计划 | manual | 3h | 2018-10-07 08:00 A | 2018-10-07 11:00 | 6 | 67% | 1h |  |  |  | 李俊 | 3h | 2h | 207 | 138 | 沟通管理计划模板 | 沟通管理计划 | 制作沟通管理计划 |
| 24 | 1.2.1.5 | 配置管理计划 | manual | 3h | 2018-10-07 08:00 A | 2018-10-07 11:00 | 6 | 67% | 1h |  |  |  | 吴荣欣 | 3h | 2h | 207 | 138 | 组内讨论如何进行配置管理 | 配置管理流程图 | 决定配置管理流程 |
| 25 | 1.2.1.6 | 进度管理计划 | manual | 3h | 2018-10-07 08:00 A | 2018-10-07 11:00 | 6, 29 | 67% | 1h |  |  |  | 李俊 | 3h | 2h | 207 | 138 | 进度管理计划模板 | 进度管理计划 | 制作进度管理计划 |
| 26 | 1.2.1.7 | 人力资源管理计划 | manual | 3h | 2018-09-23 19:00 | 2018-09-23 22:00 | 6 |  |  |  |  |  | 吴荣欣 | 3h |  | 207 |  | 人力资源管理计划模板 | 人力资源管理计划 | 制作人力资源管理计划 |
| 27 | 1.2.1.8 | 质量管理计划 | manual | 3h | 2018-10-07 08:00 A | 2018-10-07 11:00 | 6 | 80% | 0.6h |  |  |  | 李俊 | 3h | 2.4h | 207 | 165.6 | 质量管理计划模板 | 质量管理计划 | 保证需求工程的质量 |
| 28 | 1.2.1.9 | 合并文档 | manual | 2h | 2018-10-08 19:00 | 2018-10-08 21:00 | 20, 21, 22, 23, 24, 25, 26, 27 |  |  |  |  |  | 李俊 | 2h |  | 138 |  | 各个子计划 | 软件需求工程项目计划 | 整合各个字计划 |
| 29 | 1.2.2 | 甘特图 | manual | 3h | 2018-09-29 08:00 A | 2018-09-29 21:00 | 6 | 50% | 1.5h |  |  |  | 李俊 | 3h | 1.5h | 207 | 103.5 | 需求工程流程 | 初步的甘特图 | 制作出初步的甘特图 |
| 30 | 1.2.3 | WBS | manual | 2h | 2018-10-20 08:00 A | 2018-10-20 10:00 | 29 | 50% | 1h |  |  |  | 吴荣欣 | 1h |  | 69 |  | 甘特图分工 | 初步的WBS | 制作WBS |
| 31 | 1.2.4 | OBS | manual | 2h | 2018-10-21 08:00 A | 2018-10-21 10:00 | 19 | 40% | 1.2h |  |  |  | 夏昌灏; 叶忠杰 | 3.2h | 0.8h | 220.8 | 55.2 | 人员的分工 | 初步的OBS图 | 制作OBS图 |

| ID | WBS | Task | Type | Duration | Start | Finish | Predecessors | Complete | Remaining | Actual start | Total slack | Resources | Work | Actual work | Cost | Actual cost | 输入 | 输出 | 任务说明 |
| --- | --- | --- | --- | --- | --- | --- | --- | --- | --- | --- | --- | --- | --- | --- | --- | --- | --- | --- | --- |
| 32 | 1.2.5 | **可行性分析** |  | 141d | 2018-10-08 19:00 | 2018-12-05 12:00 | 19 | 45% | 77.55d | 2018-10-13 08:00 | 0d |  | 97.6h | 17.4h | 6,734.4 | 1,200.6 |  |  |  |
| 33 | 1.2.5.1 | **可行性分析初稿** |  | 22h | 2018-10-13 08:00 A | 2018-10-14 08:00 |  | 38% | 13.75h |  |  | 夏昌灏; 叶忠杰; 黄浩峰; 吴荣欣 | 92h | 15h | 6,348 | 1,035 | 需求工程项目计划 | 初步的可行性分析报告 | 第一次制作可行性分析报告 |
| 34 | 1.2.5.1.1 | 经济可行性分析 | manual | 2h | 2018-10-13 08:00 A | 2018-10-13 10:00 | 19 | 50% | 1h |  |  | 黄浩峰 | 2h | 1h | 138 | 69 | 经济可行性分析模板 | 经济可行性分析部分 | 制作经济可行性 |
| 35 | 1.2.5.1.2 | 法律可行性分析 | manual | 2h | 2018-10-08 19:00 | 2018-10-08 21:00 | 19 |  |  |  |  | 吴荣欣 | 2h |  | 138 |  | 法律可行性分析模板 | 法律可行性分析部分 | 制作法律可行性分析 |
| 36 | 1.2.5.1.3 | 技术可行性分析 | manual | 2h | 2018-10-13 08:00 A | 2018-10-13 10:00 | 19 | 50% | 1h |  |  | 夏昌灏 | 2h | 1h | 138 | 69 | 技术可行性分析模板 | 技术可行性分析部分 | 制作技术可行性分析 |
| 37 | 1.2.5.1.4 | 操作可行性分析 | manual | 2h | 2018-10-13 08:00 A | 2018-10-13 10:00 | 19 | 50% | 1h |  |  | 李俊 | 2h | 1h | 138 | 69 | 操作可行性分析模板 | 操作可行性分析部分 | 制作操作可行性分析 |
| 38 | 1.2.5.2 | 可行性分析重做 | manual | 4h | 2018-12-05 08:00 A | 2018-12-05 12:00 | 34, 35, 36, 37 | 60% | 1.6h |  |  | 叶忠杰; 吴荣欣 | 5.6h | 2.4h | 386.4 | 165.6 | 可行性分析初稿 | 重做的可行性分析 | 因为课上评审，可行性分析很糟糕，得重做 |
| 39 | 1.2.6 | 编写项目章程 | milestone, manual | 3h | 2018-10-19 08:00 A | 2018-12-08 20:24 | 38, 30 | 53% | 1.4h |  |  | 李俊 | 3h | 1.6h | 207 | 110.4 | 授权和整个项目的安排 | 项目章程 | 由项目下达者授权李俊为项目经理，全权负责本次项目 |
| 40 | 1.2.7 | 需求计划第一次正式评审 | manual | 1h | 2018-10-09 19:00 | 2018-10-09 20:00 | 28 |  |  |  |  | 黄浩峰; 李俊; 吴荣欣; 夏昌灏; 叶忠杰 | 5h |  | 345 |  | 杨枨老师和众组长的修改意见 | 修改的需求计划 | 因为整个需求计划漏洞太多，所以申请重评 |
| 41 | 1.2.8 | **需求计划第二次正式评审** |  | 1h | 2018-12-05 08:00 A | 2018-12-05 09:00 | 40 | 16% | 0.84h |  |  | 黄浩峰; 李俊; 吴荣欣; 叶忠杰; 夏昌灏 | 15h | 6.6h | 1,035 | 455.4 | 杨枨老师的修改计划 | 正式的需求计划 | 在课上进行第二次评审，但因为做的还是太差，继续修改 |
| 42 | 1.2.8.1 | 范围管理计划修改 | manual | 2h | 2018-10-08 19:00 | 2018-10-08 21:00 | 20 |  |  |  |  | 黄浩峰 | 2h |  | 138 |  | 范围管理计划 | 修改后的范围管理计划 | 根据PMBOK来修改范围管理计划 |
| 43 | 1.2.8.2 | 进度管理计划修改25 | manual | 3h | 2018-10-08 19:00 | 2018-10-09 20:00 | 25 |  |  |  |  | 李俊 | 3h |  | 207 |  | 进度管理计划 | 修改后的进度管理计划 | 根据PMBOK修改进度管理计划 |
| 44 | 1.2.8.3 | 配置管理计划修改 | manual | 2h | 2018-12-05 08:00 A | 2018-12-05 10:00 | 24 | 80% | 0.4h |  |  | 吴荣欣 | 2h | 1.6h | 138 | 110.4 | 配置管理计划 | 修改后的配置管理计划 | 根据PMBOK的要求修改配置管理计划 |
| 45 | 1.2.8.4 | 风险管理计划修改 | manual | 1h | 2018-10-08 19:00 | 2018-10-08 20:00 | 21 |  |  |  |  | 吴荣欣 | 1h |  | 69 |  | 风险管理计划 | 修改后的风险管理计划 | 根据PMBOK来修改风险管理计划 |
| 46 | 1.2.8.5 | 成本管理计划修改 | manual | 2h | 2018-10-08 19:00 | 2018-10-08 21:00 | 22 |  |  |  |  | 吴荣欣 | 2h |  | 138 |  | 成本管理计划 | 修改后的成本管理计划 | 根据PMBOK修改成本管理计划 |
| 47 | 1.2.9 | 项目经理变更 | manual | 1h | 2018-12-08 20:24 | 2018-12-08 21:24 | 39, 41 |  |  |  |  | 黄浩峰; 李俊; 吴荣欣; 夏昌灏; 叶忠杰 | 5h |  | 345 |  | 项目经理变更会议 | 全组同意变更 | 因为前项目经理工作不够上心，自觉提出变更请求，并通知并询问了两位老师，并提交了会议录音和会议报告以及邮件 |
| 48 | 1.2.10 | 正式发布软件需求工程项目计划 | milestone, manual | 1h | 2018-12-07 08:00 A | 2018-12-07 09:00 A | 42, 43, 44, 45, 46, 47 | 100% |  |  |  | 李俊; 夏昌灏; 黄浩峰; 叶忠杰; 吴荣欣 | 1h | 1h | 69 | 69 | 初步的需求项目计划工程 | 软件需求项目工程计划 | 通过第三次评审，发布需求工程计划 |
| 49 | 1.3 | **需求工程执行过程** |  | 109h | 2018-11-23 08:00 | 2019-01-22 09:00 |  | 7% | 101.79h | 2018-09-22 08:00 |  |  | 549.3h | 20.4h | 37,901.7 | 1,407.6 |  |  |  |
| 50 | 1.3.1 | **需求开发过程** |  | 54h | 2018-11-30 08:00 | 2018-12-31 09:00 |  | 4% | 51.75h | 2018-12-04 08:00 |  |  | 257.5h | 7.1h | 17,767.5 | 489.9 |  |  |  |
| 51 | 1.3.1.1 | **需求获取** |  | 32h | 2018-12-04 08:00 | 2018-12-12 09:00 |  | 7% | 29.81h | 2018-12-06 08:00 |  |  | 153.5h | 7.1h | 10,591.5 | 489.9 |  |  |  |
| 52 | 1.3.1.1.1 | 与客户代表杨枨老师进行访谈 | manual | 1h | 2018-12-17 08:00 A | 2018-12-17 09:00 | 40 | 50% | 0.5h |  |  | 黄浩峰; 李俊; 吴荣欣; 夏昌灏; 叶忠杰 | 5h | 2.5h | 345 | 172.5 | 全组访谈 | 访谈录音及业务需求 | 获取业务需求 |
| 53 | 1.3.1.1.2 | 第二次与客户代表杨枨老师进行访谈 | manual | 1h | 2018-12-18 08:00 | 2018-12-18 09:00 | 52 |  |  |  |  | 黄浩峰; 李俊; 吴荣欣; 夏昌灏; 叶忠杰 | 5h |  | 345 |  | 全组访谈 | 访谈录音及业务需求 | 获取业务需求 |
| 54 | 1.3.1.1.3 | 第三次与客户代表杨枨老师进行访谈 | manual | 1h | 2018-12-19 08:00 | 2018-12-19 09:00 | 53 |  |  |  |  | 黄浩峰; 李俊; 吴荣欣; 夏昌灏; 叶忠杰 | 5h |  | 345 |  | 全组访谈 | 访谈录音及业务需求 | 因为之前范围愿景文档不够完善，所以这次完善了愿景文档，再一次进行需求确认 |
| 55 | 1.3.1.1.4 | 确定需求开发过程 | manual | 2h | 2018-12-17 19:00 | 2018-12-17 21:00 | 47, 52 |  |  |  |  | 吴荣欣; 夏昌灏 | 4h |  | 276 |  | 产品愿景和范围 | 确定开发过程 | 确定需求开发过程 |
| 56 | 1.3.1.1.5 | 上下文图 | manual | 1h | 2018-12-06 08:00 A | 2018-12-06 09:00 | 52 | 50% | 0.5h |  |  | 黄浩峰 | 1h | 0.5h | 69 | 34.5 | 软件需求课本 | 上下文图 | 可以更好地说明愿景和范围文档 |
| 57 | 1.3.1.1.6 | 关联图 | manual | 1h | 2018-12-06 08:00 A | 2018-12-06 09:00 | 52 | 50% | 0.5h |  |  | 黄浩峰 | 1h | 0.5h | 69 | 34.5 | 软件需求课本 | 关联图 | 根据杨枨老师课上提的要求，愿景文档需要绘制关联图 |
| 58 | 1.3.1.1.7 | 编写项目愿景与范围文档 | manual | 5h | 2018-12-07 08:00 A | 2019-01-05 20:24 | 52, 48, 57, 56, 55 | 32% | 3.4h |  |  | 黄浩峰 | 5h | 1.6h | 345 | 110.4 | 杨枨老师给与关于需求的意见 | 愿景与范围文档 | 编写愿景文档 |
| 59 | 1.3.1.1.8 | 制作界面原型 | manual | 36h | 2018-12-18 20:00 | 2019-01-20 20:00 | 54, 67, 68, 69, 70 |  |  |  |  | 夏昌灏; 叶忠杰 | 72h |  | 4,968 |  | 各个需求用例 | 界面原型 | 为了与用户更好地进行需求获取活动而绘制的原型 |
| 60 | 1.3.1.1.9 | 用户问卷调查 | manual | 1h | 2018-12-19 20:24 | 2018-12-20 19:24 | 58 |  |  |  |  | 叶忠杰; 李俊 | 2h |  | 138 |  | 问题 | 用户调查报告 | 更好地了解用户 |
| 61 | 1.3.1.1.10 | 分析调查结果 | manual | 2h | 2018-12-08 21:00 | 2018-12-09 20:00 | 60 |  |  |  |  | 李俊; 吴荣欣 | 4h |  | 276 |  | 调查报告 | 分析结果 | 对收集到的问卷信息进行调查 |
| 62 | 1.3.1.1.11 | 用户群分类 | manual | 2h | 2018-12-10 20:48 | 2018-12-11 20:48 | 58, 61 |  |  |  |  | 李俊; 夏昌灏 | 4h |  | 276 |  | 选题说明 | 用户分类文档 | 对用户进行判断 |
| 63 | 1.3.1.1.12 | 选择产品代表 | manual | 2h | 2018-12-09 08:00 A | 2018-12-09 10:00 | 62 | 50% | 1h |  |  | 叶忠杰 | 2h | 1h | 138 | 69 | 选出产品代表 | 产品代表 | 产品代表负责产品 |
| 64 | 1.3.1.1.13 | 建立核心队伍 | manual | 2h | 2018-12-09 19:00 | 2018-12-09 21:00 | 63 |  |  |  |  | 李俊 | 2h |  | 138 |  | 小组名单 | 核心队伍人员责任表 | 建立核心队伍以更好的完成项目 |
| 65 | 1.3.1.1.14 | 愿景与范围文档补充 | manual | 3h | 2018-12-09 08:00 A | 2018-12-11 20:48 | 58 | 33% | 2h |  |  | 黄浩峰 | 3h | 1h | 207 | 69 | 初版的项目愿景与范围文档 | 修改后的项目愿景与范围文档 | 补充上下文图与关联图 |
| 66 | 1.3.1.1.15 | 确定使用实例 | manual | 4h | 2018-12-09 21:00 | 2018-12-11 20:00 | 64 |  |  |  |  | 夏昌灏; 李俊 | 8h |  | 552 |  | 获取的需求 | 使用用例 | 确定使用用例为之后的SRS文档制作做准备 |
| 67 | 1.3.1.1.16 | 与教师代表杨枨老师进行访谈 | manual | 1h | 2018-12-18 19:00 | 2018-12-18 20:00 | 54 |  |  |  |  | 黄浩峰; 李俊; 吴荣欣; 夏昌灏; 叶忠杰 | 5h |  | 345 |  | 全组访谈 | 会议录音及教师需求 | 与教师用户进行需求的确认 |
| 68 | 1.3.1.1.17 | 学生用户代表正式访谈 | manual | 0.5h | 2018-12-18 19:00 | 2018-12-18 19:30 | 55 |  |  |  |  | 黄浩峰; 李俊; 吴荣欣; 夏昌灏; 叶忠杰 | 2.5h |  | 172.5 |  | G10小组和学生代表王飞钢进行访谈活动 | 学生用户代表访谈记录 | 为获取学生用户的需求进行访谈 |
| 69 | 1.3.1.1.18 | 管理员用户代表正式访谈 | manual | 1h | 2018-12-18 19:00 | 2018-12-18 20:00 | 55 |  |  |  |  | 黄浩峰; 李俊; 吴荣欣; 夏昌灏; 叶忠杰 | 5h |  | 345 |  | G10小组和管理员代表陈尚辉进行访谈 | 管理员用户代表访谈记录 | 为获取管理员用户的需求进行访谈 |
| 70 | 1.3.1.1.19 | 游客代表正式访谈 | manual | 1h | 2018-12-18 19:00 | 2018-12-18 20:00 | 55 |  |  |  |  | 黄浩峰; 李俊; 吴荣欣; 夏昌灏; 叶忠杰 | 5h |  | 345 |  | G10小组和游客代表余奇超进行访谈 | 游客用户代表访谈记录 | 为获取游客代表的需求进行访谈 |
| 71 | 1.3.1.1.20 | 召开应用程序开发联系会议（JAD） | manual | 0.5h | 2019-01-03 20:00 | 2019-01-03 20:30 | 59 |  |  |  |  | 叶忠杰; 吴荣欣; 黄浩峰; 李俊; 夏昌灏 | 2.5h |  | 172.5 |  | JAD参会人员 | 召开会议 | 各方代表一起就应用程序开发联系展开会议 |
| 72 | 1.3.1.1.21 | 第二次召开应用程序开发联系会议（JAD） | manual | 0.5h | 2019-01-03 20:30 | 2019-01-03 21:00 | 71 |  |  |  |  | 叶忠杰; 吴荣欣; 黄浩峰; 李俊; 夏昌灏 | 2.5h |  | 172.5 |  | JAD参会人员 | 召开会议 | 因为第一次JAD会议，准备不够充分，所以在给出备选方案并处理好各个用户代表的冲突之后，再次开启JAD会议 |
| 73 | 1.3.1.1.22 | 分析用户工作流程 | manual | 1h | 2019-01-04 19:00 | 2019-01-04 20:00 | 72, 66 |  |  |  |  | 李俊 | 1h |  | 69 |  | JAD会议记录 | 用户工作流程 | 分析用户工作流程 |
| 74 | 1.3.1.1.23 | 确定质量属性 | manual | 2h | 2018-12-13 20:00 | 2018-12-14 20:00 | 73 |  |  |  |  | 李俊 | 2h |  | 138 |  | 质量属性 | 确定质量属性 | 为质量属性排优先级 |
| 75 | 1.3.1.1.24 | 检查问题报告 | manual | 1h | 2018-12-14 20:00 | 2018-12-14 21:00 | 74 |  |  |  |  | 吴荣欣 | 1h |  | 69 |  | 技术支持人员和客户服务人员获取的问题报告 | 当前系统的问题报告 | 进一步完善需求 |
| 76 | 1.3.1.1.25 | 需求重用 | manual | 2h | 2018-12-15 19:00 | 2018-12-15 21:00 | 75 |  |  |  |  | 李俊; 吴荣欣 | 4h |  | 276 |  | 已获得的需求 | 审核、重用这些需求资料 | 尽量使项目需求具有独立性和可重用性 |

| ID | WBS | Task | Type | Duration | Start | Finish | Predecessors | Resources | Work | Cost | 输入 | 输出 | 任务说明 |
| --- | --- | --- | --- | --- | --- | --- | --- | --- | --- | --- | --- | --- | --- |
| 77 | 1.3.1.2 | **需求分析** |  | 30h | 2018-12-14 08:00 | 2018-12-26 09:00 |  |  | 31h | 2,139 |  |  |  |
| 78 | 1.3.1.2.1 | 确定需求优先级 | manual | 1h | 2018-12-17 08:00 | 2018-12-17 09:00 | 82 | 夏昌灏 | 1h | 69 | 获取的需求 | 需求优先级文档 | 根据不同用户提的需求，进行优先级排序 |
| 79 | 1.3.1.2.2 | 编写数据字典 | manual | 4h | 2018-12-19 19:00 | 2018-12-20 21:00 | 83 | 黄浩峰; 吴荣欣 | 8h | 552 | 提取的需求 | 数据字典 | 编写数据字典 |
| 80 | 1.3.1.2.3 | 绘制关联图 | manual | 2h | 2018-12-15 20:00 | 2018-12-15 22:00 | 76, 65 | 叶忠杰 | 2h | 138 | 系统与系统外部的界限和接口 | 关联图 | 描述通过接口的信息流与物质流 |
| 81 | 1.3.1.2.4 | 创建开发原型 | manual | 4h | 2018-12-16 19:00 | 2018-12-17 20:00 | 80 | 黄浩峰; 夏昌灏 | 8h | 552 | 用户对原型的评价和系统可能的实现 | 开发原型 | 使有关概念和过程更为直观 |
| 82 | 1.3.1.2.5 | 分析可实现性 | manual | 2h | 2018-12-17 20:00 | 2018-12-18 20:00 | 81 | 黄浩峰; 叶忠杰 | 4h | 276 | 需求工程项目计划 | 需求可行性分析文档 | 通过原型进行分析可实现性 |
| 83 | 1.3.1.2.6 | 为需求建立模型 | manual | 4h | 2018-12-17 19:00 | 2018-12-18 21:00 | 78 | 吴荣欣; 李俊 | 8h | 552 | 获取的需求 | 初步的需求模型 | 建立需求模型以更好的分析 |
| 84 | 1.3.1.3 | **需求规范说明** |  | 40h | 2018-12-19 08:00 | 2019-01-12 09:00 | 77 |  | 63h | 4,347 |  |  |  |
| 85 | 1.3.1.3.1 | 采用软件需求规格模板 | manual | 3h | 2018-12-21 19:00 | 2018-12-22 20:00 | 79 | 夏昌灏; 叶忠杰 | 6h | 414 | 获取的需求 | 需求规格模板 | 必须满足格式 |
| 86 | 1.3.1.3.2 | 指明需求来源 | manual | 2h | 2018-12-19 08:00 | 2018-12-19 10:00 | 85 | 李俊; 黄浩峰 | 4h | 276 | 提取的需求 | 指明需求获取对应的人员 | 在每项需求与其他的系统元素之间建立关联关系 – 联系链 |
| 87 | 1.3.1.3.3 | 为每一项需求注上标号 | manual | 3h | 2018-12-22 21:00 | 2019-01-05 20:00 | 86, 89 | 叶忠杰; 李俊 | 6h | 414 | 指明来源的需求 | 标识好的需求 | 便于需求的跟踪、维护与识别 |
| 88 | 1.3.1.3.4 | 记录业务规范 | manual | 3h | 2018-12-20 08:00 | 2018-12-20 11:00 | 87 | 吴荣欣 | 3h | 207 | 业务规范 | 业务规范独立文档 | 由相应的功能需求实现，建立对应关系 |
| 89 | 1.3.1.3.5 | 记录非功能需求 | manual | 1h | 2018-12-22 20:00 | 2018-12-22 21:00 | 85 | 叶忠杰 | 1h | 69 | 非功能需求 | 非功能需求记录 | 对于非功能需求进行记录 |
| 90 | 1.3.1.3.6 | 创建需求跟踪能力矩阵 | manual | 4h | 2018-12-20 19:00 | 2018-12-21 02:00 | 88 | 吴荣欣; 李俊 | 8h | 552 | 管理工具软件 | 需求跟踪能力矩阵 | 变更影响分析 |
| 91 | 1.3.1.3.7 | 编写软件需求规格说明书 | milestone, manual | 5h | 2018-12-21 19:00 | 2018-12-22 22:00 | 88, 83, 90 | 黄浩峰; 李俊; 吴荣欣; 夏昌灏; 叶忠杰 | 25h | 1,725 | 需求规格模板 | 初步的SRS文档 | 编写初版的SRS文档 |
| 92 | 1.3.1.3.8 | SRS组内评审 | manual | 1h | 2019-01-11 08:00 | 2019-01-11 09:00 | 91 | 黄浩峰; 李俊; 吴荣欣; 夏昌灏; 叶忠杰 | 5h | 345 | 全组参与 | SRS组内评审记录 | 将SRS组内评审 |
| 93 | 1.3.1.3.9 | SRS评审 | manual | 1h | 2019-01-12 08:00 | 2019-01-12 09:00 | 92 | 黄浩峰; 李俊; 吴荣欣; 夏昌灏; 叶忠杰 | 5h | 345 | SRS初版 | SRS评审结果 | SRS评审 |
| 94 | 1.3.1.4 | **需求验证** |  | 22h | 2018-12-24 08:00 | 2018-12-30 09:00 | 84 |  | 10h | 690 |  |  |  |
| 95 | 1.3.1.4.1 | 审查需求文档 | manual | 2h | 2018-12-22 20:00 | 2018-12-22 22:00 | 91 | 夏昌灏 | 2h | 138 | 评审表 | 审查后的SRS | 保证质量 |
| 96 | 1.3.1.4.2 | 编写测试用例 | manual | 2h | 2018-12-23 19:00 | 2018-12-23 21:00 | 95 | 吴荣欣 | 2h | 138 | 需求 | 测试用例 | 验证需求模型的准确性 |
| 97 | 1.3.1.4.3 | 编写用户手册 | manual | 2h | 2018-12-23 21:00 | 2019-01-04 21:00 | 96 | 夏昌灏; 叶忠杰 | 4h | 276 | 用户手册模板 | 用户手册初始版本 | 辅助需求分析 |
| 98 | 1.3.1.4.4 | 确定合格的标准 | manual | 2h | 2018-12-24 20:00 | 2018-12-25 20:00 | 97 | 夏昌灏 | 2h | 138 | 用户确定的标准 | 合格标准 | 描述合格系统的要求 |
| 99 | 1.3.2 | **需求管理过程** |  | 42h | 2019-01-07 08:00 | 2019-01-18 10:00 |  |  | 63h | 4,347 |  |  |  |
| 100 | 1.3.2.1 | 进行变更影响分析 | manual | 3h | 2019-01-05 08:00 | 2019-01-05 11:00 | 98 | 黄浩峰 | 3h | 207 | 需求规格说明书 | 需求影响分析 | 变更需求分析 |
| 101 | 1.3.2.2 | 建立基线并控制需求集和版本 | manual | 3h | 2019-01-06 08:00 | 2019-01-06 11:00 | 100 | 吴荣欣; 李俊 | 6h | 414 | 需求规格书 | 基线 | 建立需求基线 |
| 102 | 1.3.2.3 | 确定变更控制过程 | manual | 1h | 2019-01-07 08:00 | 2019-01-07 09:00 | 101 | 黄浩峰; 吴荣欣 | 2h | 138 | 变更控制过程 | 需求变更文档初版 | 确定变更控制 |
| 103 | 1.3.2.4 | 建立变更控制委员会 | manual | 3h | 2019-01-07 08:00 | 2019-01-07 11:00 | 102 | 黄浩峰; 叶忠杰 | 6h | 414 | 变更控制委员 | 变更控制委员会 | 需要专门人员来进行变更控制 |
| 104 | 1.3.2.5 | 跟踪每一项变更 | manual | 3h | 2019-01-07 08:00 | 2019-01-07 11:00 | 103 | 李俊; 叶忠杰 | 6h | 414 | 需求变更控制文档初版 | 需求变更文档第二版 | 跟踪变更 |
| 105 | 1.3.2.6 | 维护变更历史记录 | manual | 3h | 2019-01-08 08:00 | 2019-01-08 11:00 | 100 | 黄浩峰; 李俊 | 6h | 414 | 需求变更文档第二版 | 需求变更文档 | 记录变更历史 |
| 106 | 1.3.2.7 | 衡量需求稳定性 | manual | 3h | 2019-01-08 08:00 | 2019-01-08 11:00 | 105 | 李俊; 黄浩峰 | 6h | 414 | 需求文档的控制版本和基准版本 | 需求稳定性文档 | 对需求稳定性的衡量 |
| 107 | 1.3.2.8 | 使用需求管理工具 | manual | 3h | 2019-01-08 19:00 | 2019-01-09 20:00 | 106 | 夏昌灏 | 3h | 207 | 变更需求 | 使用需求管理工具 | 使用工具来管理需求 |
| 108 | 1.3.2.9 | 需求变更组内评审 | manual | 1h | 2019-01-10 08:00 | 2019-01-10 09:00 | 107 | 黄浩峰; 李俊; 吴荣欣; 夏昌灏; 叶忠杰 | 5h | 345 | 全组参与 | 需求变更组内评审记录 | 对需求变更文档进行组内评审 |
| 109 | 1.3.2.10 | 发布需求变更文档 | milestone, manual | 4h | 2019-01-10 19:00 | 2019-01-11 02:00 | 107, 104, 108 | 李俊; 黄浩峰; 吴荣欣; 夏昌灏; 叶忠杰 | 20h | 1,380 | 需要变更的需求 | 需求变更文档 | 需求变更文档的完成 |

| ID | WBS | Task | Type | Duration | Start | Finish | Predecessors | Complete | Remaining | Actual start | Total slack | Free slack | Constraint | Resources | Work | Actual work | Cost | Actual cost | 输入 | 输出 | 任务说明 |
| --- | --- | --- | --- | --- | --- | --- | --- | --- | --- | --- | --- | --- | --- | --- | --- | --- | --- | --- | --- | --- | --- |
| 110 | 1.3.3 | **设计阶段** |  | 38d | 2019-01-06 08:00 | 2019-01-15 09:00 |  |  |  |  |  |  |  |  | 12h |  | 828 |  |  |  |  |
| 111 | 1.3.3.1 | 测试计划 |  | 2h | 2019-01-11 19:00 | 2019-01-11 21:00 | 109 |  |  |  | -2d | 0d | start no earlier than 2019-01-11 08:00 | 李俊 | 2h |  | 138 |  | 用例 | 测试计划 | 测试项目的实用性 |
| 112 | 1.3.3.2 | 培训计划 | manual | 2h | 2019-01-11 19:00 | 2019-01-11 21:00 | 109 |  |  |  |  |  |  | 吴荣欣 | 2h |  | 138 |  | 培训规划 | 培训计划 | 使用户对于本网站的使用更加得心应手 |
| 113 | 1.3.3.3 | 系统维护计划 |  | 2h | 2019-01-11 19:00 | 2019-01-11 21:00 | 109 |  |  |  | -2d | 0d | start no earlier than 2019-01-11 08:00 | 李俊 | 2h |  | 138 |  | 维护内容 | 系统维护计划 | 保证网站的正常运行，详细规定系统维护的相关内容 |
| 114 | 1.3.3.4 | 安装部署计划 | manual | 2h | 2019-01-11 19:00 | 2019-01-11 21:00 | 109 |  |  |  |  |  |  | 黄浩峰 | 2h |  | 138 |  | 部署安排 | 安装部署计划 | 对网站的安装部署进行规划 |
| 115 | 1.3.3.5 | 软件概要设计说明 | manual | 4h | 2019-01-11 19:00 | 2019-01-12 21:00 | 109 |  |  |  |  |  |  | 黄浩峰 | 4h |  | 276 |  | 软件设计的因素 | 软件概要设计说明报告 | 对软件的设计进行规划 |
| 116 | 1.3.4 | **项目控制过程** |  | 209d | 2018-09-29 08:00 | 2019-01-12 09:00 |  | 22% | 163.19d | 2018-09-22 08:00 |  |  |  |  | 216.8h | 13.3h | 14,959.2 | 917.7 |  |  |  |
| 117 | 1.3.4.1 | 第一次正式会议 | manual | 1h | 2018-09-22 08:00 A | 2018-09-22 09:00 A | 6 | 100% |  |  |  |  |  | 黄浩峰; 李俊; 吴荣欣; 夏昌灏; 叶忠杰 | 5h | 5h | 345 | 345 | 全组讨论 | 第一次会议记录 | 项目小组第一次进行正式会议 |
| 118 | 1.3.4.2 | 第二次正式会议 | manual | 1h | 2018-09-28 08:00 A | 2018-09-28 09:00 A | 117 | 100% |  |  |  |  |  | 李俊; 黄浩峰; 夏昌灏; 吴荣欣; 叶忠杰 | 1h | 1h | 69 | 69 | 全组讨论 | 第二次会议记录 | 项目小组第一次进行正式会议 |
| 119 | 1.3.4.3 | 第三次正式会议 | manual | 1h | 2018-10-13 08:00 A | 2018-10-13 09:00 A | 118 | 100% |  |  |  |  |  | 黄浩峰; 李俊; 吴荣欣; 夏昌灏; 叶忠杰 | 1h | 1h | 69 | 69 | 人员讨论 | 第三次会议记录 | 项目小组第三次进行正式会议 |
| 120 | 1.3.4.4 | 第四次正式会议 | manual | 1h | 2018-10-20 08:00 A | 2018-10-20 09:00 A | 119 | 100% |  |  |  |  |  | 李俊; 黄浩峰; 吴荣欣; 夏昌灏; 叶忠杰 | 1h | 1h | 69 | 69 | 全组讨论 | 第四次会议记录 | 项目小组第四次进行正式会议 |
| 121 | 1.3.4.5 | 第五次会议记录 | manual | 1h | 2018-10-27 08:00 A | 2018-10-27 09:00 A | 120 | 100% |  |  |  |  |  | 黄浩峰; 李俊; 吴荣欣; 夏昌灏; 叶忠杰 | 2.5h | 2.5h | 172.5 | 172.5 | 全组讨论 | 第五次会议记录 | 项目小组第五次进行正式会议 |
| 122 | 1.3.4.6 | 第六次正式会议 | manual | 1h | 2018-11-03 08:00 A | 2018-11-03 09:00 A | 121 | 100% |  |  |  |  |  | 黄浩峰; 李俊; 吴荣欣; 叶忠杰; 夏昌灏 | 1h | 1h | 69 | 69 | 全组讨论 | 第六次会议记录 | 项目小组第六次进行正式会议 |
| 123 | 1.3.4.7 | 第七次正式会议 | manual | 1h | 2018-11-10 08:00 A | 2018-11-10 09:00 A | 122 | 100% |  |  |  |  |  | 黄浩峰; 李俊; 吴荣欣; 叶忠杰; 夏昌灏 | 0.8h | 0.8h | 55.2 | 55.2 | 全组讨论 | 第七次会议记录 | 项目小组第七次进行正式会议 |
| 124 | 1.3.4.8 | 第八次正式会议 | manual | 1h | 2018-11-17 08:00 A | 2018-11-17 09:00 A | 123 | 100% |  |  |  |  |  | 黄浩峰; 李俊; 吴荣欣; 叶忠杰; 夏昌灏 | 1h | 1h | 69 | 69 | 全组讨论 | 第八次会议记录 | 项目小组第八次进行正式会议 |
| 125 | 1.3.4.9 | 第九次正式会议 | manual | 1h | 2018-11-24 08:00 | 2018-11-24 09:00 | 124 |  |  |  |  |  |  | 黄浩峰; 李俊; 吴荣欣; 夏昌灏; 叶忠杰 | 5h |  | 345 |  | 全组讨论 | 第九次会议记录 | 项目小组第九次进行正式会议 |
| 126 | 1.3.4.10 | 第十次正式会议 | manual | 1h | 2018-12-01 08:00 | 2018-12-01 09:00 | 125 |  |  |  |  |  |  | 黄浩峰; 李俊; 吴荣欣; 夏昌灏; 叶忠杰 | 5h |  | 345 |  | 全组讨论 | 第十次会议记录 | 项目小组第十次进行正式会议 |
| 127 | 1.3.4.11 | 第十一次正式会议 | manual | 1h | 2018-12-05 08:00 | 2018-12-05 09:00 | 126 |  |  |  |  |  |  | 黄浩峰; 李俊; 吴荣欣; 夏昌灏; 叶忠杰 | 5h |  | 345 |  | 全组讨论 | 第十一次会议记录 | 项目小组第十一次进行正式会议 |
| 128 | 1.3.4.12 | 第十二次正式会议 | manual | 1h | 2018-12-07 08:00 | 2018-12-07 09:00 | 127 |  |  |  |  |  |  | 黄浩峰; 李俊; 吴荣欣; 夏昌灏; 叶忠杰 | 5h |  | 345 |  | 全组讨论 | 第十二次会议记录 | 项目小组第十二次进行正式会议 |
| 129 | 1.3.4.13 | 第十三次正式会议 | manual | 1h | 2018-12-08 19:00 | 2018-12-08 20:00 | 128 |  |  |  |  |  |  | 黄浩峰; 李俊; 吴荣欣; 夏昌灏; 叶忠杰 | 5h |  | 345 |  | 全组讨论 | 第十三次会议记录 | 项目小组第十三次进行正式会议 |
| 130 | 1.3.4.14 | 第十四次正式会议 | manual | 1h | 2018-12-21 08:00 | 2018-12-21 09:00 | 129 |  |  |  |  |  |  | 黄浩峰; 李俊; 吴荣欣; 夏昌灏; 叶忠杰 | 5h |  | 345 |  | 小组讨论 | 第十四次会议记录 | 项目小组第十四次进行正式会议 |
| 131 | 1.3.4.15 | 第十五次正式会议 | manual | 1h | 2018-12-28 08:00 | 2018-12-28 09:00 | 130 |  |  |  |  |  |  | 黄浩峰; 李俊; 吴荣欣; 夏昌灏; 叶忠杰 | 5h |  | 345 |  | 全组讨论 | 第十五次会议记录 | 项目小组第十五次进行正式会议 |
| 132 | 1.3.4.16 | 团队建设 | manual | 1h | 2018-12-29 09:00 | 2018-12-29 10:00 | 131 |  |  |  |  |  |  | 黄浩峰; 李俊; 吴荣欣; 夏昌灏; 叶忠杰 | 5h |  | 345 |  | 组员参与 | 团队工作热情 | 团队建设 |
| 133 | 1.3.4.17 | 第十六次正式会议 | manual | 1h | 2019-01-04 19:00 | 2019-01-04 20:00 | 132 |  |  |  |  |  |  | 黄浩峰; 李俊; 吴荣欣; 夏昌灏; 叶忠杰 | 5h |  | 345 |  | 全组讨论 | 第十六次会议记录 | 项目小组第十六次进行正式会议 |
| 134 | 1.3.4.18 | 第十七次正式会议记录 | manual | 1h | 2019-01-11 08:00 | 2019-01-11 09:00 | 133 |  |  |  |  |  |  | 黄浩峰; 李俊; 吴荣欣; 夏昌灏; 叶忠杰 | 5h |  | 345 |  | 全组讨论 | 第十七正式会议 | 项目小组第十七次进行正式会议 |

| ID | WBS | Task | Type | Duration | Start | Finish | Predecessors | Resources | Work | Cost | 输入 | 输出 | 任务说明 |
| --- | --- | --- | --- | --- | --- | --- | --- | --- | --- | --- | --- | --- | --- |
| 135 | 1.3.4.19 | **项目收尾--评审** |  | 35h | 2019-01-09 08:00 | 2019-01-17 09:00 | 109, 111, 112, 113, 114, 115 |  | 153.5h | 10,591.5 |  |  |  |
| 136 | 1.3.4.19.1 | **整理文档** |  | 17h | 2019-01-12 19:00 | 2019-01-19 21:00 | 93 | 黄浩峰; 李俊; 吴荣欣; 夏昌灏; 叶忠杰 | 91h | 6,279 |  |  |  |
| 137 | 1.3.4.19.1.1 | 整理需求规格说明 | manual | 2h | 2019-01-11 19:00 | 2019-01-11 21:00 | 109 | 夏昌灏 | 2h | 138 | SRS内容 | 更新后的SRS | 对SRS进行整合和更新 |
| 138 | 1.3.4.19.1.2 | 整理愿景和范围文档 | manual | 2h | 2019-01-11 19:00 | 2019-01-11 21:00 | 109 | 黄浩峰 | 2h | 138 | 愿景和范围内容 | 更新后的愿景和范围文档 | 对愿景和范围文档进行整合和更新 |
| 139 | 1.3.4.19.1.3 | 修改界面原型 | manual | 2h | 2019-01-11 19:00 | 2019-01-11 21:00 | 109 | 叶忠杰 | 2h | 138 | 界面原型修改 | 修改后的界面原型 | 对于界面原型进行修改 |
| 140 | 1.3.4.19.2 | 项目总结报告 | milestone, manual | 5h | 2019-01-11 19:00 | 2019-01-12 22:00 | 109 | 李俊; 黄浩峰; 吴荣欣; 夏昌灏; 叶忠杰 | 25h | 1,725 | 对本项目进行总结 | 项目总结报告 | 整个项目的总结 |
| 141 | 1.3.4.19.3 | 最终评审 | manual | 1h | 2019-01-15 19:00 | 2019-01-15 20:00 | 136, 140 | 黄浩峰; 李俊; 吴荣欣; 夏昌灏; 叶忠杰 | 5h | 345 | 全组组员和各个小组组长以及杨枨老师和侯宏仑老师参与评审 | 最终评审结果 | 对整个项目的进行最终评审 |
| 142 | 1.3.4.19.4 | 修改文档 | manual | 3h | 2019-01-16 19:00 | 2019-01-17 01:00 | 141 | 黄浩峰; 李俊; 吴荣欣; 夏昌灏; 叶忠杰 | 15h | 1,035 | 最终评审的评审意见 | 修改后的文档 | 对于评审中两位老师给出的评审结果进行修改 |
| 143 | 1.3.4.19.5 | 移交正式文档 | manual | 0.5h | 2019-01-17 19:00 | 2019-01-17 19:30 | 142 | 黄浩峰; 李俊; 吴荣欣; 夏昌灏; 叶忠杰 | 2.5h | 172.5 | 整个项目文件 | 项目正式宣告完成 | 将项目的最终成果进行移交 |
| 144 | 1.3.4.19.6 | 散伙饭 | manual | 3h | 2019-01-17 19:30 | 2019-01-18 20:30 | 143 | 黄浩峰; 李俊; 吴荣欣; 夏昌灏; 叶忠杰 | 15h | 1,035 |  |  |  |
